# G15-Cronograma-TE2

Schedule from MS Project, 2020-11-16 to 2021-01-25.

## Calendars

- Calendario-Sevilla: Mon-Fri 09:00-13:00, 15:00-19:00; Sat-Sun off. Exceptions (off unless hours are given): 2020-12-06 (Festividad Día de la Constitución), 2020-12-09 (Festividad Inmaculada Concepción), 2020-12-25 (Festividad Natividad del Señor).

## Resources

| Resource |
| --- |
| Javier Vázquez Zambrano |
| Eduardo Miguel Botía Domingo |
| Daniel Arellano Martínez |
| Juan Noguerol Tirado |
| José Manuel Sánchez Ruiz |

## Schedule

| ID | WBS | Task | Duration | Start | Finish | Predecessors | Total slack | Free slack | Constraint | Resources | Work | Código EDT | Código actividad |
| --- | --- | --- | --- | --- | --- | --- | --- | --- | --- | --- | --- | --- | --- |
| 1 | 1 | **TE2 - e-Eat** | 48.31d | 2020-11-16 09:00 | 2021-01-25 11:27 |  | 0d |  |  |  | 152.03h |  |  |
| 2 | 1.1 | **Finalización del Plan de Dirección de Proyecto** | 0.3d | 2020-11-16 09:00 | 2020-11-16 11:23 |  | 45.45d | 4.7d |  |  | 2.38h |  |  |
| 3 | 1.1.1 | **Plan para la Dirección del Proyecto** | 0.3d | 2020-11-16 09:00 | 2020-11-16 11:23 |  | 45.45d |  |  |  | 2.38h | 1.3.1.1 |  |
| 4 | 1.1.1.1 | Redactar el Plan para la Dirección del Proyecto | 143min | 2020-11-16 09:00 | 2020-11-16 11:23 |  | 45.45d |  | start no earlier than 2020-11-16 08:00 | Eduardo Miguel Botía Domingo | 2.38h |  | 0038 |
| 5 | 1.2 | **Finalización del proceso de planificación del proyecto** | 2.51d | 2020-11-23 09:00 | 2020-11-25 15:06 | 2 | 40.66d | 7.49d |  |  | 41.47h |  |  |
| 6 | 1.2.1 | **Plan de Gestión de las Comunicaciones** | 0.12d | 2020-11-23 09:00 | 2020-11-23 09:57 |  | 43.05d |  |  |  | 0.95h | 1.3.2.1 |  |
| 7 | 1.2.1.1 | Decidir herramientas de comunicación a usar | 15min | 2020-11-23 09:00 | 2020-11-23 09:15 |  | 43.08d | 0d | start no earlier than 2020-11-23 08:00 | Javier Vázquez Zambrano | 0.25h |  | 0001 |
| 8 | 1.2.1.2 | Decidir procedimiento de comunicación | 27min | 2020-11-23 09:30 | 2020-11-23 09:57 | 7 | 43.05d |  | start no earlier than 2020-11-23 09:30 | Javier Vázquez Zambrano | 0.45h |  | 0002 |
| 9 | 1.2.1.3 | Decidir herramienta de documentación | 15min | 2020-11-23 09:15 | 2020-11-23 09:30 | 7 | 43.11d |  | start no earlier than 2020-11-16 17:45 | Javier Vázquez Zambrano | 0.25h |  | 0003 |
| 10 | 1.2.2 | **Plan de Gestión del Alcance** | 0.26d | 2020-11-23 09:42 | 2020-11-23 11:47 |  | 40.66d |  |  |  | 2.08h | 1.3.3.2 |  |
| 11 | 1.2.2.1 | Definir estrategia para la gestión del alcance | 125min | 2020-11-23 09:42 | 2020-11-23 11:47 |  | 40.66d | 0d | start no earlier than 2020-11-23 09:42 | Eduardo Miguel Botía Domingo | 2.08h |  | 0004 |
| 12 | 1.2.3 | **Plan de Gestión de Requisitos** | 0.37d | 2020-11-23 09:00 | 2020-11-23 11:57 |  | 40.69d |  |  |  | 1.68h | 1.3.3.1 |  |
| 13 | 1.2.3.1 | Plan de Gestión de Requisitos | 25min | 2020-11-23 09:00 | 2020-11-23 09:25 |  | 41d | 0.32d | start no earlier than 2020-11-23 08:00 | Daniel Arellano Martínez | 0.42h |  | 0005 |
| 14 | 1.2.3.2 | Métricas de control de requisitos | 45min | 2020-11-23 11:12 | 2020-11-23 11:57 |  | 40.69d | 0d | start no earlier than 2020-11-23 11:12 | Daniel Arellano Martínez | 0.75h |  | 0006 |
| 15 | 1.2.3.3 | Impacto de cambios de requisitos | 31min | 2020-11-23 09:25 | 2020-11-23 09:56 |  | 40.94d | 0.25d | start no earlier than 2020-11-23 09:25 | Daniel Arellano Martínez | 0.52h |  | 0007 |
| 16 | 1.2.4 | **Requisitos** | 0.17d | 2020-11-23 11:57 | 2020-11-23 15:17 |  | 40.69d |  |  |  | 1.33h | 1.3.3.3.1 |  |
| 17 | 1.2.4.1 | Listar los requisitos | 25min | 2020-11-23 11:57 | 2020-11-23 12:22 | 13, 14, 15 | 40.69d | 0d | finish no earlier than 2020-10-16 17:00 | Daniel Arellano Martínez | 0.42h |  | 0008 |
| 18 | 1.2.4.2 | Crear la matriz de trazabilidad | 55min | 2020-11-23 12:22 | 2020-11-23 15:17 | 17 | 40.69d | 0.03d | start no earlier than 2020-11-23 12:22 | Daniel Arellano Martínez | 0.92h |  | 0009 |
| 19 | 1.2.5 | **Definición del Alcance** | 0.79d | 2020-11-23 11:47 | 2020-11-24 10:07 |  | 40.66d |  |  |  | 6.33h | 1.3.3.3.2 |  |
| 20 | 1.2.5.1 | Revisar el acta de constitución | 103min | 2020-11-23 11:47 | 2020-11-23 15:30 | 11 | 40.66d | 0d | finish no earlier than 2020-10-19 17:00 | Eduardo Miguel Botía Domingo | 1.72h |  | 0010 |
| 21 | 1.2.5.2 | Analizar requisitos | 74min | 2020-11-23 15:30 | 2020-11-23 16:44 | 18, 20 | 40.66d | 0d |  | Eduardo Miguel Botía Domingo | 1.23h |  | 0011 |
| 22 | 1.2.5.3 | Describir el alcance | 203min | 2020-11-23 16:44 | 2020-11-24 10:07 | 21 | 40.66d | 0d | finish no earlier than 2020-10-19 17:00 | Eduardo Miguel Botía Domingo | 3.38h |  | 0012 |
| 23 | 1.2.6 | **EDT** | 0.6d | 2020-11-24 10:07 | 2020-11-24 16:57 |  | 40.66d |  |  |  | 4.83h | 1.3.3.3.3 |  |
| 24 | 1.2.6.1 | Determinar paquetes de trabajo | 63min | 2020-11-24 10:07 | 2020-11-24 11:10 | 22 | 40.66d | 0d | finish no earlier than 2020-10-19 17:00 | Eduardo Miguel Botía Domingo | 1.05h |  | 0013 |
| 25 | 1.2.6.2 | Crear la EDT | 125min | 2020-11-24 11:10 | 2020-11-24 15:15 | 24 | 40.66d | 0d |  | Eduardo Miguel Botía Domingo | 2.08h |  | 0014 |
| 26 | 1.2.6.3 | Componer el diccionario de la EDT | 102min | 2020-11-24 15:15 | 2020-11-24 16:57 | 25 | 40.66d | 0d | finish no earlier than 2020-10-19 17:00 | Eduardo Miguel Botía Domingo | 1.7h |  | 0015 |

| ID | WBS | Task | Duration | Start | Finish | Predecessors | Total slack | Free slack | Constraint | Resources | Work | Código EDT | Código actividad |
| --- | --- | --- | --- | --- | --- | --- | --- | --- | --- | --- | --- | --- | --- |
| 27 | 1.2.7 | **Plan de Gestión del Cronograma** | 0.32d | 2020-11-23 12:47 | 2020-11-23 17:19 |  | 42.25d |  |  |  | 2.53h | 1.3.4.1 |  |
| 28 | 1.2.7.1 | Redactar el Plan de Gestión del Cronograma | 152min | 2020-11-23 12:47 | 2020-11-23 17:19 |  | 42.25d | 1.59d | start no earlier than 2020-11-23 12:47 | José Manuel Sánchez Ruiz | 2.53h |  | 0016 |
| 29 | 1.2.8 | **Definición de Actividades** | 0.3d | 2020-11-24 16:57 | 2020-11-25 09:21 |  | 40.66d |  |  |  | 2.4h | 1.3.4.2 |  |
| 30 | 1.2.8.1 | Analizar los hitos y requisitos | 21min | 2020-11-24 16:57 | 2020-11-24 17:18 | 26 | 40.66d | 0d | finish no earlier than 2020-10-13 17:00 | Juan Noguerol Tirado | 0.35h |  | 0017 |
| 31 | 1.2.8.2 | Determinar las actividades necesarias | 123min | 2020-11-24 17:18 | 2020-11-25 09:21 | 30 | 40.66d | 0d |  | Juan Noguerol Tirado | 2.05h |  | 0018 |
| 32 | 1.2.9 | **Secuenciación de las Actividades** | 0.34d | 2020-11-25 09:21 | 2020-11-25 12:04 |  | 40.66d |  |  |  | 2.72h | 1.3.4.3 |  |
| 33 | 1.2.9.1 | Determinar relaciones entre actividades | 102min | 2020-11-25 09:21 | 2020-11-25 11:03 | 31 | 40.66d | 0d | start no earlier than 2020-10-21 08:00 | Juan Noguerol Tirado | 1.7h |  | 0019 |
| 34 | 1.2.9.2 | Justificar dependencias | 61min | 2020-11-25 11:03 | 2020-11-25 12:04 | 33 | 40.66d | 0d |  | Juan Noguerol Tirado | 1.02h |  | 0020 |
| 35 | 1.2.10 | **Estimación de la Duración** | 0.12d | 2020-11-25 09:21 | 2020-11-25 10:21 |  | 40.79d |  |  |  | 1h | 1.3.4.4 |  |
| 36 | 1.2.10.1 | Coordinar una reunión para realizar una estimación de las actividades | 60min | 2020-11-25 09:21 | 2020-11-25 10:21 | 31 | 40.79d | 0d | finish no earlier than 2020-10-16 17:00 | Javier Vázquez Zambrano | 1h |  | 0021 |
| 37 | 1.2.11 | **Crear el Cronograma** | 0.13d | 2020-11-25 12:04 | 2020-11-25 15:06 |  | 40.66d |  |  |  | 1.03h | 1.3.4.5 |  |
| 38 | 1.2.11.1 | Definir enfoque y control del cronograma | 31min | 2020-11-25 12:04 | 2020-11-25 12:35 | 28, 34 | 40.66d | 0d | finish no earlier than 2020-10-16 17:00 | José Manuel Sánchez Ruiz | 0.52h |  | 0022 |
| 39 | 1.2.11.2 | Definir gestión de cambios del cronograma | 31min | 2020-11-25 12:35 | 2020-11-25 15:06 | 38 | 40.66d |  | finish no earlier than 2020-10-16 17:00 | José Manuel Sánchez Ruiz | 0.52h |  | 0023 |
| 40 | 1.2.12 | **Plan de Gestión de Costos** | 0.12d | 2020-11-25 12:02 | 2020-11-25 15:02 |  | 40.67d |  |  |  | 1h | 1.3.5.1 |  |
| 41 | 1.2.12.1 | Redactar el Plan de Gestión de Costos | 60min | 2020-11-25 12:02 | 2020-11-25 15:02 | 43, 44 | 40.67d |  | start no earlier than 2020-11-25 12:02 | Daniel Arellano Martínez | 1h |  | 0028 |
| 42 | 1.2.13 | **Estimar los Costos** | 1.78d | 2020-11-23 15:17 | 2020-11-25 11:31 |  | 40.79d |  |  |  | 1.58h | 1.3.5.2 |  |
| 43 | 1.2.13.1 | Calcular coste de personal | 25min | 2020-11-25 10:21 | 2020-11-25 10:46 | 36, 51 | 40.79d | 0d | finish no earlier than 2020-10-23 17:00 | Daniel Arellano Martínez | 0.42h |  | 0026 |
| 44 | 1.2.13.2 | Calcular los costes indirectos y de amortización | 25min | 2020-11-23 15:17 | 2020-11-23 15:42 | 51 | 42.42d | 1.63d | start no earlier than 2020-11-23 15:17 | Daniel Arellano Martínez | 0.42h |  | 0027 |
| 45 | 1.2.13.3 | Redactar la Gestión de los Costos | 45min | 2020-11-25 10:46 | 2020-11-25 11:31 | 43, 44 | 40.79d | 0d | finish no earlier than 2020-10-23 17:00 | Daniel Arellano Martínez | 0.75h |  | 0029 |
| 46 | 1.2.14 | **Determinar el presupuesto** | 0.06d | 2020-11-25 11:31 | 2020-11-25 12:02 |  | 40.79d |  |  |  | 0.52h | 1.3.5.3 |  |
| 47 | 1.2.14.1 | Realizar el presupuesto | 31min | 2020-11-25 11:31 | 2020-11-25 12:02 | 45 | 40.79d |  |  | Daniel Arellano Martínez | 0.52h |  | 0030 |
| 48 | 1.2.15 | **Plan de Gestión de la Calidad** | 0.38d | 2020-11-23 09:57 | 2020-11-23 13:00 |  | 42.67d |  |  |  | 3.05h | 1.3.6.1 |  |
| 49 | 1.2.15.1 | Redactar el Plan de Gestión de la Calidad | 183min | 2020-11-23 09:57 | 2020-11-23 13:00 |  | 42.67d |  | start no earlier than 2020-11-23 09:57 | Javier Vázquez Zambrano | 3.05h |  | 0031 |
| 50 | 1.2.16 | **Estimación de los Recursos de las Actividades** | 0.1d | 2020-11-23 11:18 | 2020-11-23 12:06 |  | 42.57d |  |  |  | 0.8h | 1.3.7.2 |  |
| 51 | 1.2.16.1 | Redactar la Estimación de los Recursos | 48min | 2020-11-23 11:18 | 2020-11-23 12:06 | 53 | 42.57d | 0.15d | start no earlier than 2020-11-23 11:18 | José Manuel Sánchez Ruiz | 0.8h |  | 0025 |

| ID | WBS | Task | Duration | Start | Finish | Predecessors | Total slack | Free slack | Constraint | Resources | Work | Código EDT | Código actividad |
| --- | --- | --- | --- | --- | --- | --- | --- | --- | --- | --- | --- | --- | --- |
| 52 | 1.2.17 | **Planificar la Gestión de los Recursos** | 0.1d | 2020-11-23 10:30 | 2020-11-23 11:18 |  | 42.57d |  |  |  | 0.8h | 1.3.7.1 |  |
| 53 | 1.2.17.1 | Redactar el Plan de la Gestión de Recursos | 48min | 2020-11-23 10:30 | 2020-11-23 11:18 |  | 42.57d | 0d | start no earlier than 2020-11-23 10:30 | José Manuel Sánchez Ruiz | 0.8h |  | 0024 |
| 54 | 1.2.18 | **Planificar la Gestión de los Riesgos** | 0.09d | 2020-11-23 09:00 | 2020-11-23 09:45 |  | 42.9d |  |  |  | 0.75h | 1.3.8.1 |  |
| 55 | 1.2.18.1 | Planificar la Gestión de los Riesgos | 45min | 2020-11-23 09:00 | 2020-11-23 09:45 |  | 42.9d | 0d | start no earlier than 2020-11-23 08:00 | José Manuel Sánchez Ruiz | 0.75h |  | 0032 |
| 56 | 1.2.19 | **Plan de respuesta de riesgos** | 0.09d | 2020-11-23 18:00 | 2020-11-23 18:41 |  | 42.21d |  |  |  | 0.68h | 1.3.8.2 |  |
| 57 | 1.2.19.1 | Detallar los atributos de los riesgos | 41min | 2020-11-23 18:00 | 2020-11-23 18:41 | 59 | 42.21d |  | start no earlier than 2020-11-23 18:00 | José Manuel Sánchez Ruiz | 0.68h |  | 0034 |
| 58 | 1.2.20 | **Identificación de riesgos** | 0.09d | 2020-11-23 09:45 | 2020-11-23 10:30 |  | 42.9d |  |  |  | 0.75h | 1.3.8.3 |  |
| 59 | 1.2.20.1 | Identificar los Riesgos | 45min | 2020-11-23 09:45 | 2020-11-23 10:30 | 55 | 42.9d | 0.2d |  | José Manuel Sánchez Ruiz | 0.75h |  | 0033 |
| 60 | 1.2.21 | **Análisis cualitativo de riesgos** | 0.09d | 2020-11-23 17:17 | 2020-11-23 17:58 |  | 42.3d |  |  |  | 0.68h | 1.3.8.4 |  |
| 61 | 1.2.21.1 | Detallar los atributos de los riesgos | 41min | 2020-11-23 17:17 | 2020-11-23 17:58 | 59 | 42.3d |  | start no earlier than 2020-11-23 17:17 | José Manuel Sánchez Ruiz | 0.68h |  | 0034 |
| 62 | 1.2.22 | **Análisis cuantitativo de riesgos** | 0.09d | 2020-11-23 12:06 | 2020-11-23 12:47 |  | 42.7d |  |  |  | 0.68h | 1.3.8.5 |  |
| 63 | 1.2.22.1 | Detallar los atributos de los riesgos | 41min | 2020-11-23 12:06 | 2020-11-23 12:47 | 59 | 42.7d |  | start no earlier than 2020-11-23 12:06 | José Manuel Sánchez Ruiz | 0.68h |  | 0034 |
| 64 | 1.2.23 | **Plan de gestión de las adquisiciones** | 0.16d | 2020-11-23 09:56 | 2020-11-23 11:12 |  | 42.9d |  |  |  | 1.27h | 1.3.9.1 |  |
| 65 | 1.2.23.1 | Redactar el Plan de Gestión de las Adquisiciones | 31min | 2020-11-23 09:56 | 2020-11-23 10:27 |  | 42.9d | 0d | start no earlier than 2020-11-23 09:56 | Daniel Arellano Martínez | 0.52h |  | 0035 |
| 66 | 1.2.23.2 | Redactar tipos de contratos necesarios | 45min | 2020-11-23 10:27 | 2020-11-23 11:12 | 65 | 42.9d |  |  | Daniel Arellano Martínez | 0.75h |  | 0036 |
| 67 | 1.2.24 | **Gestión de los interesados** | 0.16d | 2020-11-23 09:00 | 2020-11-23 10:18 |  | 43.01d |  |  |  | 1.3h | 1.3.10.1 |  |
| 68 | 1.2.24.1 | Planificar el involucramiento de los interesados | 78min | 2020-11-23 09:00 | 2020-11-23 10:18 |  | 43.01d |  | start no earlier than 2020-11-23 08:00 | Juan Noguerol Tirado | 1.3h |  | 0037 |
| 69 | 1.2.25 | **Informe de esfuerzo individual** | 0.09d | 2020-11-23 09:00 | 2020-11-23 09:42 |  | 43.08d |  |  |  | 0.7h | 1.5.0 |  |
| 70 | 1.2.25.1 | Realizar el Informe de esfuerzo individual para la fase de planificación | 42min | 2020-11-23 09:00 | 2020-11-23 09:42 |  | 43.08d |  | start no earlier than 2020-11-23 08:00 | Eduardo Miguel Botía Domingo | 0.7h |  | 2001 |
| 71 | 1.3 | **Arquitectura, Instalación y configuración de entornos de desarrollo para todos los miembros del grupo** | 7.08d | 2020-12-07 09:00 | 2020-12-17 09:40 | 5 | 26.22d |  |  |  | 2.02h |  |  |
| 72 | 1.3.1 | **Estudio de posibles soluciones** | 0.05d | 2020-12-07 09:00 | 2020-12-07 09:25 |  | 33.17d |  |  |  | 0.42h | 2.1.1 |  |
| 73 | 1.3.1.1 | Estudiar las posibles soluciones | 25min | 2020-12-07 09:00 | 2020-12-07 09:25 |  | 33.17d | 0d | start no earlier than 2020-12-07 08:00 | Daniel Arellano Martínez | 0.42h |  | 4001 |
| 74 | 1.3.2 | **Diseño de aplicación** | 7.03d | 2020-12-07 09:25 | 2020-12-17 09:40 |  | 26.22d |  |  |  | 1.6h | 2.1.2 |  |
| 75 | 1.3.2.1 | Definir la arquitectura | 18min | 2020-12-07 09:25 | 2020-12-07 09:43 | 73 | 33.22d |  |  | Daniel Arellano Martínez | 0.3h |  | 4002 |
| 76 | 1.3.2.2 | Definir forma de implementación del software | 38min | 2020-12-17 09:00 | 2020-12-17 09:38 | 73 | 26.23d |  | start no earlier than 2020-12-17 08:00 | Daniel Arellano Martínez | 0.63h |  | 4003 |
| 77 | 1.3.2.3 | Definir estrategia de pruebas | 40min | 2020-12-17 09:00 | 2020-12-17 09:40 | 73 | 26.22d |  | start no earlier than 2020-12-17 08:00 | Juan Noguerol Tirado | 0.67h |  | 4004 |

| ID | WBS | Task | Duration | Start | Finish | Predecessors | Total slack | Free slack | Constraint | Resources | Work | Código EDT | Código actividad |
| --- | --- | --- | --- | --- | --- | --- | --- | --- | --- | --- | --- | --- | --- |
| 78 | 1.4 | **Ejecución, seguimiento y control (Iteración 1)** | 2.26d | 2020-12-10 09:00 | 2020-12-14 11:04 |  | 27.01d | 4.74d |  |  | 24.68h |  |  |
| 79 | 1.4.1 | **Reunión de planificación del sprint** | 0.07d | 2020-12-10 09:00 | 2020-12-10 09:36 |  | 29.2d |  |  |  | 0.6h | 1.6.1.0 |  |
| 80 | 1.4.1.1 | Elaborar acta de reunión acerca de planificación del sprint | 36min | 2020-12-10 09:00 | 2020-12-10 09:36 |  | 29.2d |  | start no earlier than 2020-12-10 08:00 | Javier Vázquez Zambrano | 0.6h |  | 3001 |
| 81 | 1.4.2 | **Implementación y desarrollo software** | 0.94d | 2020-12-11 09:00 | 2020-12-11 18:31 |  | 27.33d |  |  |  | 5.43h | 2.2.0 |  |
| 82 | 1.4.2.1 | Crear una página con información del proyecto | 22min | 2020-12-11 10:23 | 2020-12-11 10:45 |  | 28.02d | 0d | start no earlier than 2020-12-11 10:23 | Javier Vázquez Zambrano | 0.37h |  | 4005 |
| 83 | 1.4.2.2 | Crear vista de contacto | 17min | 2020-12-11 10:45 | 2020-12-11 11:02 | 82 | 28.02d |  | start no earlier than 2020-12-11 10:09 | Javier Vázquez Zambrano | 0.28h |  | 4006 |
| 84 | 1.4.2.3 | Implementar registro de usuarios | 100min | 2020-12-11 10:27 | 2020-12-11 12:07 |  | 27.82d | 0.12d | start no earlier than 2020-12-11 10:27 | José Manuel Sánchez Ruiz | 1.67h |  | 4007 |
| 85 | 1.4.2.4 | Crear vistas de registro | 29min | 2020-12-11 15:05 | 2020-12-11 15:34 | 84 | 27.7d |  | start no earlier than 2020-12-11 15:05 | José Manuel Sánchez Ruiz | 0.48h |  | 4008 |
| 86 | 1.4.2.5 | Implementar inicio de sesión para usuarios | 47min | 2020-12-11 17:15 | 2020-12-11 18:02 |  | 27.33d | 0d | start no earlier than 2020-12-11 17:15 | José Manuel Sánchez Ruiz | 0.78h |  | 4009 |
| 87 | 1.4.2.6 | Crear vistas de login | 29min | 2020-12-11 18:02 | 2020-12-11 18:31 | 86 | 27.33d |  | start no earlier than 2020-12-11 15:10 | José Manuel Sánchez Ruiz | 0.48h |  | 4010 |
| 88 | 1.4.2.7 | Añadir dirección a un usuario | 24min | 2020-12-11 09:00 | 2020-12-11 09:24 |  | 28.1d | 0.34d | start no earlier than 2020-12-11 08:00 | José Manuel Sánchez Ruiz | 0.4h |  | 4011 |
| 89 | 1.4.2.8 | Funcionalidad de editar usuario | 58min | 2020-12-11 12:07 | 2020-12-11 15:05 | 88 | 27.76d |  | start no earlier than 2020-12-11 12:07 | José Manuel Sánchez Ruiz | 0.97h |  | 4012 |
| 90 | 1.4.3 | **Monitorización y control del trabajo del proyecto** | 0.64d | 2020-12-11 15:59 | 2020-12-14 11:04 |  | 27.01d |  |  |  | 5.08h | 1.7.1.0 |  |
| 91 | 1.4.3.1 | Monitorizar y controlar el trabajo del proyecto | 305min | 2020-12-11 15:59 | 2020-12-14 11:04 |  | 27.01d |  | start no earlier than 2020-12-11 15:59 | Eduardo Miguel Botía Domingo | 5.08h |  | 1001 |
| 92 | 1.4.4 | **Validación del Alcance** | 0.25d | 2020-12-11 11:57 | 2020-12-11 15:59 |  | 27.65d |  |  |  | 2.03h | 1.7.2.0 |  |
| 93 | 1.4.4.1 | Realizar informes de aceptación de los entregables | 122min | 2020-12-11 11:57 | 2020-12-11 15:59 |  | 27.65d |  | start no earlier than 2020-12-11 11:57 | Eduardo Miguel Botía Domingo | 2.03h |  | 1002 |
| 94 | 1.4.5 | **Control integrado de cambios** | 0.15d | 2020-12-11 10:45 | 2020-12-11 11:57 |  | 27.9d |  |  |  | 1.2h | 1.7.3.0 |  |
| 95 | 1.4.5.1 | Elaborar registros de cambios | 72min | 2020-12-11 10:45 | 2020-12-11 11:57 |  | 27.9d |  | start no earlier than 2020-12-11 10:45 | Eduardo Miguel Botía Domingo | 1.2h |  | 1003 |
| 96 | 1.4.6 | **Control del alcance** | 0.14d | 2020-12-11 09:40 | 2020-12-11 10:45 |  | 28.05d |  |  |  | 1.08h | 1.7.4.0 |  |
| 97 | 1.4.6.1 | Informe de cumplimiento de alcance del proyecto | 65min | 2020-12-11 09:40 | 2020-12-11 10:45 |  | 28.05d |  | start no earlier than 2020-12-11 09:40 | Eduardo Miguel Botía Domingo | 1.08h |  | 1004 |
| 98 | 1.4.7 | **Control del Cronograma** | 0.13d | 2020-12-11 09:24 | 2020-12-11 10:27 |  | 28.09d |  |  |  | 1.05h | 1.7.5.0 |  |
| 99 | 1.4.7.1 | Análisis del cumplimiento y riesgos del cronograma | 63min | 2020-12-11 09:24 | 2020-12-11 10:27 |  | 28.09d |  | start no earlier than 2020-12-11 09:24 | José Manuel Sánchez Ruiz | 1.05h |  | 1005 |
| 100 | 1.4.8 | **Control de Costes** | 0.12d | 2020-12-11 09:57 | 2020-12-11 10:55 |  | 28.03d |  |  |  | 0.97h | 1.7.6.0 |  |
| 101 | 1.4.8.1 | Realizar contabilidad de costes asociados al proyecto y análisis de esta | 58min | 2020-12-11 09:57 | 2020-12-11 10:55 |  | 28.03d |  | start no earlier than 2020-12-11 09:57 | Daniel Arellano Martínez | 0.97h |  | 1006 |

| ID | WBS | Task | Duration | Start | Finish | Predecessors | Total slack | Free slack | Constraint | Resources | Work | Código EDT | Código actividad |
| --- | --- | --- | --- | --- | --- | --- | --- | --- | --- | --- | --- | --- | --- |
| 102 | 1.4.9 | **Control de Calidad** | 0.22d | 2020-12-11 11:02 | 2020-12-11 12:47 |  | 27.8d |  |  |  | 1.75h | 1.7.7.0 |  |
| 103 | 1.4.9.1 | Implementar y realizar controles de calidad de los resultados tras la ejecución de actividades | 105min | 2020-12-11 11:02 | 2020-12-11 12:47 |  | 27.8d |  | start no earlier than 2020-12-11 11:02 | Javier Vázquez Zambrano | 1.75h |  | 1007 |
| 104 | 1.4.10 | **Control de los recursos** | 0.09d | 2020-12-11 15:34 | 2020-12-11 16:17 |  | 27.61d |  |  |  | 0.72h | 1.7.8.0 |  |
| 105 | 1.4.10.1 | Controlar y realizar inventario de los recursos y su estado | 43min | 2020-12-11 15:34 | 2020-12-11 16:17 |  | 27.61d |  | start no earlier than 2020-12-11 15:34 | José Manuel Sánchez Ruiz | 0.72h |  | 1008 |
| 106 | 1.4.11 | **Monitorización de las comunicaciones** | 0.1d | 2020-12-11 09:36 | 2020-12-11 10:23 |  | 28.1d |  |  |  | 0.78h | 1.7.9.0 |  |
| 107 | 1.4.11.1 | Controlar y registrar el procedimiento para establecer comunicaciones | 47min | 2020-12-11 09:36 | 2020-12-11 10:23 |  | 28.1d |  | start no earlier than 2020-12-11 09:36 | Javier Vázquez Zambrano | 0.78h |  | 1009 |
| 108 | 1.4.12 | **Monitorización de los riesgos** | 0.1d | 2020-12-11 16:17 | 2020-12-11 17:06 |  | 27.51d |  |  |  | 0.82h | 1.7.10.0 |  |
| 109 | 1.4.12.1 | Analizar el estado de los riesgos | 49min | 2020-12-11 16:17 | 2020-12-11 17:06 |  | 27.51d |  | start no earlier than 2020-12-11 16:17 | José Manuel Sánchez Ruiz | 0.82h |  | 1010 |
| 110 | 1.4.13 | **Control de las adquisiciones** | 0.12d | 2020-12-11 09:00 | 2020-12-11 09:57 |  | 28.15d |  |  |  | 0.95h | 1.7.11.0 |  |
| 111 | 1.4.13.1 | Registrar adquisiciones e inversiones | 57min | 2020-12-11 09:00 | 2020-12-11 09:57 |  | 28.15d |  | start no earlier than 2020-12-11 08:00 | Daniel Arellano Martínez | 0.95h |  | 1011 |
| 112 | 1.4.14 | **Monitorización de los interesados** | 0.05d | 2020-12-11 09:00 | 2020-12-11 09:22 |  | 28.23d |  |  |  | 0.37h | 1.7.12.0 |  |
| 113 | 1.4.14.1 | Controlar y monitorizar el estado de los interesados | 22min | 2020-12-11 09:00 | 2020-12-11 09:22 |  | 28.23d |  | start no earlier than 2020-12-11 08:00 | Juan Noguerol Tirado | 0.37h |  | 1012 |
| 114 | 1.4.15 | **Reunión de revisión del sprint** | 0.07d | 2020-12-11 15:35 | 2020-12-11 16:11 |  | 27.62d |  |  |  | 0.6h | 1.6.2.0 |  |
| 115 | 1.4.15.1 | Elaborar acta de reunión acerca de revisión del sprint | 36min | 2020-12-11 15:35 | 2020-12-11 16:11 |  | 27.62d |  | start no earlier than 2020-12-11 15:35 | Javier Vázquez Zambrano | 0.6h |  | 3002 |
| 116 | 1.4.16 | **Reunión de retrospectiva del equipo** | 0.07d | 2020-12-11 15:00 | 2020-12-11 15:35 |  | 27.7d |  |  |  | 0.58h | 1.6.3.0 |  |
| 117 | 1.4.16.1 | Elaborar acta de reunión acerca de la retrospectiva del equipo | 35min | 2020-12-11 15:00 | 2020-12-11 15:35 |  | 27.7d |  | start no earlier than 2020-12-11 15:00 | Javier Vázquez Zambrano | 0.58h |  | 3003 |
| 118 | 1.4.17 | **Gráficas sprint burndown y product burndown** | 0.08d | 2020-12-11 09:00 | 2020-12-11 09:40 |  | 28.19d |  |  |  | 0.67h | 1.6.4.0 |  |
| 119 | 1.4.17.1 | Representar y analizar gráficas de sprint burndown y product burndown | 40min | 2020-12-11 09:00 | 2020-12-11 09:40 |  | 28.19d |  | start no earlier than 2020-12-11 08:00 | Eduardo Miguel Botía Domingo | 0.67h |  | 3004 |
| 120 | 1.5 | **Ejecución, seguimiento y control (Iteración 2)** | 1.35d | 2020-12-21 09:00 | 2020-12-22 11:46 | 78 | 21.56d | 12.65d |  |  | 30.83h |  |  |
| 121 | 1.5.1 | **Reunión de planificación del sprint** | 0.07d | 2020-12-21 09:00 | 2020-12-21 09:36 |  | 22.83d |  |  |  | 0.6h | 1.6.1.0 |  |
| 122 | 1.5.1.1 | Elaborar acta de reunión acerca de planificación del sprint | 36min | 2020-12-21 09:00 | 2020-12-21 09:36 |  | 22.83d |  | start no earlier than 2020-12-21 09:00 | Javier Vázquez Zambrano | 0.6h |  | 3001 |
| 123 | 1.5.2 | **Implementación y desarrollo software** | 1.03d | 2020-12-21 09:00 | 2020-12-22 09:14 |  | 21.88d |  |  |  | 10.88h | 2.2.0 |  |
| 124 | 1.5.2.1 | Editar la configuración de establecimiento | 50min | 2020-12-21 09:22 | 2020-12-21 10:12 |  | 22.76d |  | start no earlier than 2020-12-21 09:22 | Juan Noguerol Tirado | 0.83h |  | 4013 |
| 125 | 1.5.2.2 | Establecimiento gestiona productos | 50min | 2020-12-21 10:12 | 2020-12-21 11:02 |  | 22.58d | 0d | start no earlier than 2020-12-21 10:12 | Juan Noguerol Tirado | 0.83h |  | 4015 |
| 126 | 1.5.2.3 | Crear vista de edición de productos | 34min | 2020-12-21 11:02 | 2020-12-21 11:36 | 125 | 22.58d |  |  | Juan Noguerol Tirado | 0.57h |  | 4016 |
| 127 | 1.5.2.4 | Listar establecimientos | 30min | 2020-12-21 09:00 | 2020-12-21 09:30 |  | 22.41d | 0d | start no earlier than 2020-12-21 08:00 | José Manuel Sánchez Ruiz | 0.5h |  | 4017 |
| 128 | 1.5.2.5 | Filtrar establecimientos | 61min | 2020-12-21 17:45 | 2020-12-21 18:46 | 127 | 21.94d |  | start no earlier than 2020-12-21 17:45 | José Manuel Sánchez Ruiz | 1.02h |  | 4018 |
| 129 | 1.5.2.6 | Listar productos de un establecimiento | 34min | 2020-12-21 09:30 | 2020-12-21 10:04 | 127 | 22.41d | 0d |  | José Manuel Sánchez Ruiz | 0.57h |  | 4019 |
| 130 | 1.5.2.7 | Añadir botón de compra en el listado de productos | 25min | 2020-12-21 10:04 | 2020-12-21 10:29 | 129 | 22.41d | 0d | start no earlier than 2020-12-21 10:04 | José Manuel Sánchez Ruiz | 0.42h |  | 4020 |
| 131 | 1.5.2.8 | Crear vista de cesta | 61min | 2020-12-21 10:29 | 2020-12-21 11:30 | 130 | 22.41d | 0d |  | José Manuel Sánchez Ruiz | 1.02h |  | 4021 |
| 132 | 1.5.2.9 | Funcionalidad de efectuar la compra | 54min | 2020-12-21 11:30 | 2020-12-21 12:24 | 131 | 22.41d | 0d |  | José Manuel Sánchez Ruiz | 0.9h |  | 4022 |
| 133 | 1.5.2.10 | Crear vista de realizar pago | 34min | 2020-12-21 12:24 | 2020-12-21 12:58 | 132 | 22.41d |  |  | José Manuel Sánchez Ruiz | 0.57h |  | 4023 |
| 134 | 1.5.2.11 | Notificar a establecimiento de un pedido | 62min | 2020-12-21 15:39 | 2020-12-21 16:41 |  | 22.2d |  | start no earlier than 2020-12-21 15:39 | Daniel Arellano Martínez | 1.03h |  | 4024 |
| 135 | 1.5.2.12 | Asociar pedido a repartidor | 36min | 2020-12-21 10:18 | 2020-12-21 10:54 |  | 22.67d |  | start no earlier than 2020-12-21 10:18 | Daniel Arellano Martínez | 0.6h |  | 4027 |
| 136 | 1.5.2.13 | Establecimiento puede cambiar el estado del pedido | 44min | 2020-12-21 18:30 | 2020-12-22 09:14 | 137 | 21.88d |  | start no earlier than 2020-12-21 18:30 | Daniel Arellano Martínez | 0.73h |  | 4028 |
| 137 | 1.5.2.14 | Vista de modificar estado de pedido | 34min | 2020-12-21 11:52 | 2020-12-21 12:26 | 138 | 22.39d | 0.51d | start no earlier than 2020-12-21 11:52 | Daniel Arellano Martínez | 0.57h |  | 4029 |
| 138 | 1.5.2.15 | Modificar estado de pedido | 44min | 2020-12-21 09:34 | 2020-12-21 10:18 |  | 22.58d | 0.2d | start no earlier than 2020-12-21 09:34 | Daniel Arellano Martínez | 0.73h |  | 4030 |

| ID | WBS | Task | Duration | Start | Finish | Total slack | Constraint | Resources | Work | Código EDT | Código actividad |
| --- | --- | --- | --- | --- | --- | --- | --- | --- | --- | --- | --- |
| 139 | 1.5.3 | **Monitorización y control del trabajo del proyecto** | 0.64d | 2020-12-21 16:41 | 2020-12-22 11:46 | 21.56d |  |  | 5.08h | 1.7.1.0 |  |
| 140 | 1.5.3.1 | Monitorizar y controlar el trabajo del proyecto | 305min | 2020-12-21 16:41 | 2020-12-22 11:46 | 21.56d | start no earlier than 2020-12-21 16:41 | Eduardo Miguel Botía Domingo | 5.08h |  | 1001 |
| 141 | 1.5.4 | **Validación del Alcance** | 0.25d | 2020-12-21 12:39 | 2020-12-21 16:41 | 22.2d |  |  | 2.03h | 1.7.2.0 |  |
| 142 | 1.5.4.1 | Realizar informes de aceptación de los entregables | 122min | 2020-12-21 12:39 | 2020-12-21 16:41 | 22.2d | start no earlier than 2020-12-21 12:39 | Eduardo Miguel Botía Domingo | 2.03h |  | 1002 |
| 143 | 1.5.5 | **Control integrado de cambios** | 0.15d | 2020-12-21 11:27 | 2020-12-21 12:39 | 22.45d |  |  | 1.2h | 1.7.3.0 |  |
| 144 | 1.5.5.1 | Elaborar registros de cambios | 72min | 2020-12-21 11:27 | 2020-12-21 12:39 | 22.45d | start no earlier than 2020-12-21 11:27 | Eduardo Miguel Botía Domingo | 1.2h |  | 1003 |
| 145 | 1.5.6 | **Control del alcance** | 0.14d | 2020-12-21 10:22 | 2020-12-21 11:27 | 22.6d |  |  | 1.08h | 1.7.4.0 |  |
| 146 | 1.5.6.1 | Informe de cumplimiento de alcance del proyecto | 65min | 2020-12-21 10:22 | 2020-12-21 11:27 | 22.6d | start no earlier than 2020-12-21 10:22 | Eduardo Miguel Botía Domingo | 1.08h |  | 1004 |
| 147 | 1.5.7 | **Control del Cronograma** | 0.13d | 2020-12-21 12:58 | 2020-12-21 16:01 | 22.28d |  |  | 1.05h | 1.7.5.0 |  |
| 148 | 1.5.7.1 | Análisis del cumplimiento y riesgos del cronograma | 63min | 2020-12-21 12:58 | 2020-12-21 16:01 | 22.28d | start no earlier than 2020-12-21 12:58 | José Manuel Sánchez Ruiz | 1.05h |  | 1005 |
| 149 | 1.5.8 | **Control de Costes** | 0.12d | 2020-12-21 10:54 | 2020-12-21 11:52 | 22.55d |  |  | 0.97h | 1.7.6.0 |  |
| 150 | 1.5.8.1 | Realizar contabilidad de costes asociados al proyecto y análisis de esta | 58min | 2020-12-21 10:54 | 2020-12-21 11:52 | 22.55d | start no earlier than 2020-12-21 10:54 | Daniel Arellano Martínez | 0.97h |  | 1006 |
| 151 | 1.5.9 | **Control de Calidad** | 0.22d | 2020-12-21 10:23 | 2020-12-21 12:08 | 22.52d |  |  | 1.75h | 1.7.7.0 |  |
| 152 | 1.5.9.1 | Implementar y realizar controles de calidad de los resultados tras la ejecución de actividades | 105min | 2020-12-21 10:23 | 2020-12-21 12:08 | 22.52d | start no earlier than 2020-12-21 10:23 | Javier Vázquez Zambrano | 1.75h |  | 1007 |
| 153 | 1.5.10 | **Control de los recursos** | 0.09d | 2020-12-21 16:49 | 2020-12-21 17:32 | 22.09d |  |  | 0.72h | 1.7.8.0 |  |
| 154 | 1.5.10.1 | Controlar y realizar inventario de los recursos y su estado | 43min | 2020-12-21 16:49 | 2020-12-21 17:32 | 22.09d | start no earlier than 2020-12-21 16:49 | José Manuel Sánchez Ruiz | 0.72h |  | 1008 |
| 155 | 1.5.11 | **Monitorización de las comunicaciones** | 0.1d | 2020-12-21 09:36 | 2020-12-21 10:23 | 22.74d |  |  | 0.78h | 1.7.9.0 |  |
| 156 | 1.5.11.1 | Controlar y registrar el procedimiento para establecer comunicaciones | 47min | 2020-12-21 09:36 | 2020-12-21 10:23 | 22.74d | start no earlier than 2020-12-21 09:36 | Javier Vázquez Zambrano | 0.78h |  | 1009 |
| 157 | 1.5.12 | **Monitorización de los riesgos** | 0.1d | 2020-12-21 16:00 | 2020-12-21 16:49 | 22.18d |  |  | 0.82h | 1.7.10.0 |  |
| 158 | 1.5.12.1 | Analizar el estado de los riesgos | 49min | 2020-12-21 16:00 | 2020-12-21 16:49 | 22.18d | start no earlier than 2020-12-21 16:00 | José Manuel Sánchez Ruiz | 0.82h |  | 1010 |
| 159 | 1.5.13 | **Control de las adquisiciones** | 0.12d | 2020-12-21 16:41 | 2020-12-21 17:38 | 22.08d |  |  | 0.95h | 1.7.11.0 |  |
| 160 | 1.5.13.1 | Registrar adquisiciones e inversiones | 57min | 2020-12-21 16:41 | 2020-12-21 17:38 | 22.08d | start no earlier than 2020-12-21 16:41 | Daniel Arellano Martínez | 0.95h |  | 1011 |
| 161 | 1.5.14 | **Monitorización de los interesados** | 0.05d | 2020-12-21 09:00 | 2020-12-21 09:22 | 22.86d |  |  | 0.37h | 1.7.12.0 |  |
| 162 | 1.5.14.1 | Controlar y monitorizar el estado de los interesados | 22min | 2020-12-21 09:00 | 2020-12-21 09:22 | 22.86d | start no earlier than 2020-12-21 08:00 | Juan Noguerol Tirado | 0.37h |  | 1012 |

| ID | WBS | Task | Duration | Start | Finish | Predecessors | Total slack | Free slack | Constraint | Resources | Work | Código EDT | Código actividad |
| --- | --- | --- | --- | --- | --- | --- | --- | --- | --- | --- | --- | --- | --- |
| 163 | 1.5.15 | **Reunión de revisión del sprint** | 0.07d | 2020-12-21 12:08 | 2020-12-21 12:44 |  | 22.44d |  |  |  | 0.6h | 1.6.2.0 |  |
| 164 | 1.5.15.1 | Elaborar acta de reunión acerca de revisión del sprint | 36min | 2020-12-21 12:08 | 2020-12-21 12:44 |  | 22.44d |  | start no earlier than 2020-12-21 12:08 | Javier Vázquez Zambrano | 0.6h |  | 3002 |
| 165 | 1.5.16 | **Reunión de retrospectiva del equipo** | 0.07d | 2020-12-21 12:45 | 2020-12-21 15:20 |  | 22.37d |  |  |  | 0.58h | 1.6.3.0 |  |
| 166 | 1.5.16.1 | Elaborar acta de reunión acerca de la retrospectiva del equipo | 35min | 2020-12-21 12:45 | 2020-12-21 15:20 |  | 22.37d |  | start no earlier than 2020-12-21 12:45 | Javier Vázquez Zambrano | 0.58h |  | 3003 |
| 167 | 1.5.17 | **Gráficas sprint burndown y product burndown** | 0.08d | 2020-12-21 09:00 | 2020-12-21 09:40 |  | 22.82d |  |  |  | 0.67h | 1.6.4.0 |  |
| 168 | 1.5.17.1 | Representar y analizar gráficas de sprint burndown y product burndown | 40min | 2020-12-21 09:00 | 2020-12-21 09:40 |  | 22.82d |  | start no earlier than 2020-12-21 08:00 | Eduardo Miguel Botía Domingo | 0.67h |  | 3004 |
| 169 | 1.5.18 | **Informe de esfuerzo individual** | 0.09d | 2020-12-21 09:40 | 2020-12-21 10:22 |  | 22.74d |  |  |  | 0.7h | 1.5.0 |  |
| 170 | 1.5.18.1 | Realizar el Informe de esfuerzo individual para la fase de ejecución, seguimiento y control | 42min | 2020-12-21 09:40 | 2020-12-21 10:22 |  | 22.74d |  | start no earlier than 2020-12-21 09:40 | Eduardo Miguel Botía Domingo | 0.7h |  | 2002 |
| 171 | 1.6 | **Finalización de la ejecución del proceso de desarrollo software asociado al proyecto** | 1.18d | 2021-01-11 09:00 | 2021-01-12 10:24 | 120 | 8.37d | 3.83d |  |  | 21.87h |  |  |
| 172 | 1.6.1 | **Implementación y desarrollo software** | 0.39d | 2021-01-11 09:00 | 2021-01-11 12:08 |  | 9.15d |  |  |  | 5.07h | 2.2.0 |  |
| 173 | 1.6.1.1 | Informar sobre el estado del pedido a cliente | 46min | 2021-01-11 09:00 | 2021-01-11 09:46 |  | 9.25d | 0d | start no earlier than 2021-01-11 08:00 | Daniel Arellano Martínez | 0.77h |  | 4031 |
| 174 | 1.6.1.2 | Repartidor informa de recogida del pedido | 44min | 2021-01-11 10:25 | 2021-01-11 11:09 | 173 | 9.28d |  | start no earlier than 2021-01-11 10:25 | Daniel Arellano Martínez | 0.73h |  | 4032 |
| 175 | 1.6.1.3 | Cliente informa sobre pedido recibido | 39min | 2021-01-11 09:46 | 2021-01-11 10:25 | 173 | 9.25d | 0.1d |  | Daniel Arellano Martínez | 0.65h |  | 4033 |
| 176 | 1.6.1.4 | Cliente envía notificación de error | 57min | 2021-01-11 11:11 | 2021-01-11 12:08 | 175 | 9.15d |  | start no earlier than 2021-01-11 11:11 | Javier Vázquez Zambrano | 0.95h |  | 4034 |
| 177 | 1.6.1.5 | Listar pedidos antiguos | 34min | 2021-01-11 09:22 | 2021-01-11 09:56 |  | 9.43d |  | start no earlier than 2021-01-11 09:22 | Juan Noguerol Tirado | 0.57h |  | 4035 |
| 178 | 1.6.1.6 | Funcionalidad de redirigir a pantalla de error | 17min | 2021-01-11 09:00 | 2021-01-11 09:17 |  | 9.51d |  | start no earlier than 2021-01-11 08:00 | Javier Vázquez Zambrano | 0.28h |  | 4036 |
| 179 | 1.6.1.7 | Funcionalidad de problemas técnicos | 36min | 2021-01-11 10:04 | 2021-01-11 10:40 |  | 9.27d | 0d | start no earlier than 2021-01-11 10:04 | Javier Vázquez Zambrano | 0.6h |  | 4037 |
| 180 | 1.6.1.8 | Vista de problemas técnicos | 31min | 2021-01-11 10:40 | 2021-01-11 11:11 | 179 | 9.27d |  | start no earlier than 2021-01-11 10:00 | Javier Vázquez Zambrano | 0.52h |  | 4038 |
| 181 | 1.6.2 | **Monitorización y control del trabajo del proyecto** | 0.64d | 2021-01-11 15:19 | 2021-01-12 10:24 |  | 8.37d |  |  |  | 5.08h | 1.7.1.0 |  |
| 182 | 1.6.2.1 | Monitorizar y controlar el trabajo del proyecto | 305min | 2021-01-11 15:19 | 2021-01-12 10:24 |  | 8.37d |  | start no earlier than 2021-01-11 15:19 | Eduardo Miguel Botía Domingo | 5.08h |  | 1001 |
| 183 | 1.6.3 | **Validación del Alcance** | 0.25d | 2021-01-11 11:17 | 2021-01-11 15:19 |  | 9d |  |  |  | 2.03h | 1.7.2.0 |  |
| 184 | 1.6.3.1 | Realizar informes de aceptación de los entregables | 122min | 2021-01-11 11:17 | 2021-01-11 15:19 |  | 9d |  | start no earlier than 2021-01-11 11:17 | Eduardo Miguel Botía Domingo | 2.03h |  | 1002 |
| 185 | 1.6.4 | **Control integrado de cambios** | 0.15d | 2021-01-11 10:05 | 2021-01-11 11:17 |  | 9.26d |  |  |  | 1.2h | 1.7.3.0 |  |
| 186 | 1.6.4.1 | Elaborar registros de cambios | 72min | 2021-01-11 10:05 | 2021-01-11 11:17 |  | 9.26d |  | start no earlier than 2021-01-11 10:05 | Eduardo Miguel Botía Domingo | 1.2h |  | 1003 |

| ID | WBS | Task | Duration | Start | Finish | Predecessors | Total slack | Free slack | Constraint | Resources | Work | Código EDT | Código actividad |
| --- | --- | --- | --- | --- | --- | --- | --- | --- | --- | --- | --- | --- | --- |
| 187 | 1.6.5 | **Control del alcance** | 0.14d | 2021-01-11 09:00 | 2021-01-11 10:05 |  | 9.41d |  |  |  | 1.08h | 1.7.4.0 |  |
| 188 | 1.6.5.1 | Informe de cumplimiento de alcance del proyecto | 65min | 2021-01-11 09:00 | 2021-01-11 10:05 |  | 9.41d |  | start no earlier than 2021-01-11 09:00 | Eduardo Miguel Botía Domingo | 1.08h |  | 1004 |
| 189 | 1.6.6 | **Control del Cronograma** | 0.13d | 2021-01-11 09:43 | 2021-01-11 10:46 |  | 9.32d |  |  |  | 1.05h | 1.7.5.0 |  |
| 190 | 1.6.6.1 | Análisis del cumplimiento y riesgos del cronograma | 63min | 2021-01-11 09:43 | 2021-01-11 10:46 |  | 9.32d |  | start no earlier than 2021-01-11 09:43 | José Manuel Sánchez Ruiz | 1.05h |  | 1005 |
| 191 | 1.6.7 | **Control de Costes** | 0.12d | 2021-01-11 11:09 | 2021-01-11 12:07 |  | 9.15d |  |  |  | 0.97h | 1.7.6.0 |  |
| 192 | 1.6.7.1 | Realizar contabilidad de costes asociados al proyecto y análisis de esta | 58min | 2021-01-11 11:09 | 2021-01-11 12:07 |  | 9.15d |  | start no earlier than 2021-01-11 11:09 | Daniel Arellano Martínez | 0.97h |  | 1006 |
| 193 | 1.6.8 | **Control de Calidad** | 0.22d | 2021-01-11 12:08 | 2021-01-11 15:53 |  | 8.93d |  |  |  | 1.75h | 1.7.7.0 |  |
| 194 | 1.6.8.1 | Implementar y realizar controles de calidad de los resultados tras la ejecución de actividades | 105min | 2021-01-11 12:08 | 2021-01-11 15:53 |  | 8.93d |  | start no earlier than 2021-01-11 12:08 | Javier Vázquez Zambrano | 1.75h |  | 1007 |
| 195 | 1.6.9 | **Control de los recursos** | 0.09d | 2021-01-11 09:00 | 2021-01-11 09:43 |  | 9.45d |  |  |  | 0.72h | 1.7.8.0 |  |
| 196 | 1.6.9.1 | Controlar y realizar inventario de los recursos y su estado | 43min | 2021-01-11 09:00 | 2021-01-11 09:43 |  | 9.45d |  | start no earlier than 2021-01-11 08:00 | José Manuel Sánchez Ruiz | 0.72h |  | 1008 |
| 197 | 1.6.10 | **Monitorización de las comunicaciones** | 0.1d | 2021-01-11 09:17 | 2021-01-11 10:04 |  | 9.41d |  |  |  | 0.78h | 1.7.9.0 |  |
| 198 | 1.6.10.1 | Controlar y registrar el procedimiento para establecer comunicaciones | 47min | 2021-01-11 09:17 | 2021-01-11 10:04 |  | 9.41d |  | start no earlier than 2021-01-11 09:17 | Javier Vázquez Zambrano | 0.78h |  | 1009 |
| 199 | 1.6.11 | **Monitorización de los riesgos** | 0.1d | 2021-01-11 10:45 | 2021-01-11 11:34 |  | 9.22d |  |  |  | 0.82h | 1.7.10.0 |  |
| 200 | 1.6.11.1 | Analizar el estado de los riesgos | 49min | 2021-01-11 10:45 | 2021-01-11 11:34 |  | 9.22d |  | start no earlier than 2021-01-11 10:45 | José Manuel Sánchez Ruiz | 0.82h |  | 1010 |
| 201 | 1.6.12 | **Control de las adquisiciones** | 0.12d | 2021-01-11 12:07 | 2021-01-11 15:04 |  | 9.04d |  |  |  | 0.95h | 1.7.11.0 |  |
| 202 | 1.6.12.1 | Registrar adquisiciones e inversiones | 57min | 2021-01-11 12:07 | 2021-01-11 15:04 |  | 9.04d |  | start no earlier than 2021-01-11 12:07 | Daniel Arellano Martínez | 0.95h |  | 1011 |
| 203 | 1.6.13 | **Monitorización de los interesados** | 0.05d | 2021-01-11 09:00 | 2021-01-11 09:22 |  | 9.5d |  |  |  | 0.37h | 1.7.12.0 |  |
| 204 | 1.6.13.1 | Controlar y monitorizar el estado de los interesados | 22min | 2021-01-11 09:00 | 2021-01-11 09:22 |  | 9.5d |  | start no earlier than 2021-01-11 08:00 | Juan Noguerol Tirado | 0.37h |  | 1012 |
| 205 | 1.7 | **Ejecución, seguimiento y control (Iteración 3)** | 1.35d | 2021-01-18 09:00 | 2021-01-19 11:50 | 171 | 3.83d | 3.65d |  |  | 26.37h |  |  |
| 206 | 1.7.1 | **Reunión de planificación del sprint** | 0.07d | 2021-01-18 09:00 | 2021-01-18 09:36 |  | 5.1d |  |  |  | 0.6h | 1.6.1.0 |  |
| 207 | 1.7.1.1 | Elaborar acta de reunión acerca de planificación del sprint | 36min | 2021-01-18 09:00 | 2021-01-18 09:36 |  | 5.1d |  | start no earlier than 2021-01-18 09:00 | Javier Vázquez Zambrano | 0.6h |  | 3001 |
| 208 | 1.7.2 | **Pruebas y control de calidad** | 0.37d | 2021-01-18 09:45 | 2021-01-18 12:43 |  | 4.71d |  |  |  | 2.97h | 2.3.0 |  |
| 209 | 1.7.2.1 | Pruebas y control de calidad | 178min | 2021-01-18 09:45 | 2021-01-18 12:43 |  | 4.71d |  | start no earlier than 2021-01-18 09:45 | Juan Noguerol Tirado | 2.97h |  | 4039 |
| 210 | 1.7.3 | **Carga de datos** | 0.06d | 2021-01-18 09:36 | 2021-01-18 10:06 |  | 5.04d |  |  |  | 0.5h | 2.4.1 |  |
| 211 | 1.7.3.1 | Cargar los datos | 30min | 2021-01-18 09:36 | 2021-01-18 10:06 |  | 5.04d |  | start no earlier than 2021-01-18 09:36 | Javier Vázquez Zambrano | 0.5h |  | 4040 |

| ID | WBS | Task | Duration | Start | Finish | Total slack | Constraint | Resources | Work | Código EDT | Código actividad |
| --- | --- | --- | --- | --- | --- | --- | --- | --- | --- | --- | --- |
| 212 | 1.7.4 | **Despliegue** | 0.13d | 2021-01-18 10:42 | 2021-01-18 11:44 | 4.84d |  |  | 1.03h | 2.4.2 |  |
| 213 | 1.7.4.1 | Despliegue | 62min | 2021-01-18 10:42 | 2021-01-18 11:44 | 4.84d | start no earlier than 2021-01-18 10:42 | Daniel Arellano Martínez | 1.03h |  | 4041 |
| 214 | 1.7.5 | **Mantenimiento** | 0.33d | 2021-01-18 12:20 | 2021-01-18 16:57 | 4.44d |  |  | 2.62h | 2.4.3 |  |
| 215 | 1.7.5.1 | Mantenimiento | 157min | 2021-01-18 12:20 | 2021-01-18 16:57 | 4.44d | start no earlier than 2021-01-18 12:20 | José Manuel Sánchez Ruiz | 2.62h |  | 4042 |
| 216 | 1.7.6 | **Monitorización y control del trabajo del proyecto** | 0.64d | 2021-01-18 16:45 | 2021-01-19 11:50 | 3.83d |  |  | 5.08h | 1.7.1.0 |  |
| 217 | 1.7.6.1 | Monitorizar y controlar el trabajo del proyecto | 305min | 2021-01-18 16:45 | 2021-01-19 11:50 | 3.83d | start no earlier than 2021-01-18 16:45 | Eduardo Miguel Botía Domingo | 5.08h |  | 1001 |
| 218 | 1.7.7 | **Validación del Alcance** | 0.25d | 2021-01-18 12:42 | 2021-01-18 16:44 | 4.46d |  |  | 2.03h | 1.7.2.0 |  |
| 219 | 1.7.7.1 | Realizar informes de aceptación de los entregables | 122min | 2021-01-18 12:42 | 2021-01-18 16:44 | 4.46d | start no earlier than 2021-01-18 12:42 | Eduardo Miguel Botía Domingo | 2.03h |  | 1002 |
| 220 | 1.7.8 | **Control integrado de cambios** | 0.15d | 2021-01-18 11:30 | 2021-01-18 12:42 | 4.72d |  |  | 1.2h | 1.7.3.0 |  |
| 221 | 1.7.8.1 | Elaborar registros de cambios | 72min | 2021-01-18 11:30 | 2021-01-18 12:42 | 4.72d | start no earlier than 2021-01-18 11:30 | Eduardo Miguel Botía Domingo | 1.2h |  | 1003 |
| 222 | 1.7.9 | **Control del alcance** | 0.14d | 2021-01-18 10:25 | 2021-01-18 11:30 | 4.87d |  |  | 1.08h | 1.7.4.0 |  |
| 223 | 1.7.9.1 | Informe de cumplimiento de alcance del proyecto | 65min | 2021-01-18 10:25 | 2021-01-18 11:30 | 4.87d | start no earlier than 2021-01-18 10:25 | Eduardo Miguel Botía Domingo | 1.08h |  | 1004 |
| 224 | 1.7.10 | **Control del Cronograma** | 0.13d | 2021-01-18 11:17 | 2021-01-18 12:20 | 4.76d |  |  | 1.05h | 1.7.5.0 |  |
| 225 | 1.7.10.1 | Análisis del cumplimiento y riesgos del cronograma | 63min | 2021-01-18 11:17 | 2021-01-18 12:20 | 4.76d | start no earlier than 2021-01-18 11:17 | José Manuel Sánchez Ruiz | 1.05h |  | 1005 |
| 226 | 1.7.11 | **Control de Costes** | 0.12d | 2021-01-18 11:44 | 2021-01-18 12:42 | 4.72d |  |  | 0.97h | 1.7.6.0 |  |
| 227 | 1.7.11.1 | Realizar contabilidad de costes asociados al proyecto y análisis de esta | 58min | 2021-01-18 11:44 | 2021-01-18 12:42 | 4.72d | start no earlier than 2021-01-18 11:44 | Daniel Arellano Martínez | 0.97h |  | 1006 |
| 228 | 1.7.12 | **Control de Calidad** | 0.22d | 2021-01-18 10:06 | 2021-01-18 11:51 | 4.82d |  |  | 1.75h | 1.7.7.0 |  |
| 229 | 1.7.12.1 | Implementar y realizar controles de calidad de los resultados tras la ejecución de actividades | 105min | 2021-01-18 10:06 | 2021-01-18 11:51 | 4.82d | start no earlier than 2021-01-18 10:06 | Javier Vázquez Zambrano | 1.75h |  | 1007 |
| 230 | 1.7.13 | **Control de los recursos** | 0.09d | 2021-01-18 09:45 | 2021-01-18 10:28 | 5d |  |  | 0.72h | 1.7.8.0 |  |
| 231 | 1.7.13.1 | Controlar y realizar inventario de los recursos y su estado | 43min | 2021-01-18 09:45 | 2021-01-18 10:28 | 5d | start no earlier than 2021-01-18 09:45 | José Manuel Sánchez Ruiz | 0.72h |  | 1008 |
| 232 | 1.7.14 | **Monitorización de las comunicaciones** | 0.1d | 2021-01-18 11:51 | 2021-01-18 12:38 | 4.72d |  |  | 0.78h | 1.7.9.0 |  |
| 233 | 1.7.14.1 | Controlar y registrar el procedimiento para establecer comunicaciones | 47min | 2021-01-18 11:51 | 2021-01-18 12:38 | 4.72d | start no earlier than 2021-01-18 11:51 | Javier Vázquez Zambrano | 0.78h |  | 1009 |
| 234 | 1.7.15 | **Monitorización de los riesgos** | 0.1d | 2021-01-18 10:28 | 2021-01-18 11:17 | 4.89d |  |  | 0.82h | 1.7.10.0 |  |
| 235 | 1.7.15.1 | Analizar el estado de los riesgos | 49min | 2021-01-18 10:28 | 2021-01-18 11:17 | 4.89d | start no earlier than 2021-01-18 10:28 | José Manuel Sánchez Ruiz | 0.82h |  | 1010 |

| ID | WBS | Task | Duration | Start | Finish | Predecessors | Total slack | Constraint | Resources | Work | Código EDT | Código actividad |
| --- | --- | --- | --- | --- | --- | --- | --- | --- | --- | --- | --- | --- |
| 236 | 1.7.16 | **Control de las adquisiciones** | 0.12d | 2021-01-18 09:45 | 2021-01-18 10:42 |  | 4.97d |  |  | 0.95h | 1.7.11.0 |  |
| 237 | 1.7.16.1 | Registrar adquisiciones e inversiones | 57min | 2021-01-18 09:45 | 2021-01-18 10:42 |  | 4.97d | start no earlier than 2021-01-18 09:45 | Daniel Arellano Martínez | 0.95h |  | 1011 |
| 238 | 1.7.17 | **Monitorización de los interesados** | 0.05d | 2021-01-18 12:43 | 2021-01-18 15:05 |  | 4.67d |  |  | 0.37h | 1.7.12.0 |  |
| 239 | 1.7.17.1 | Controlar y monitorizar el estado de los interesados | 22min | 2021-01-18 12:43 | 2021-01-18 15:05 |  | 4.67d | start no earlier than 2021-01-18 12:43 | Juan Noguerol Tirado | 0.37h |  | 1012 |
| 240 | 1.7.18 | **Reunión de revisión del sprint** | 0.07d | 2021-01-18 12:38 | 2021-01-18 15:14 |  | 4.65d |  |  | 0.6h | 1.6.2.0 |  |
| 241 | 1.7.18.1 | Elaborar acta de reunión acerca de revisión del sprint | 36min | 2021-01-18 12:38 | 2021-01-18 15:14 |  | 4.65d | start no earlier than 2021-01-18 12:38 | Javier Vázquez Zambrano | 0.6h |  | 3002 |
| 242 | 1.7.19 | **Reunión de retrospectiva del equipo** | 0.07d | 2021-01-18 15:15 | 2021-01-18 15:50 |  | 4.58d |  |  | 0.58h | 1.6.3.0 |  |
| 243 | 1.7.19.1 | Elaborar acta de reunión acerca de la retrospectiva del equipo | 35min | 2021-01-18 15:15 | 2021-01-18 15:50 |  | 4.58d | start no earlier than 2021-01-18 15:15 | Javier Vázquez Zambrano | 0.58h |  | 3003 |
| 244 | 1.7.20 | **Gráficas sprint burndown y product burndown** | 0.08d | 2021-01-18 09:45 | 2021-01-18 10:25 |  | 5d |  |  | 0.67h | 1.6.4.0 |  |
| 245 | 1.7.20.1 | Representar y analizar gráficas de sprint burndown y product burndown | 40min | 2021-01-18 09:45 | 2021-01-18 10:25 |  | 5d | start no earlier than 2021-01-18 09:45 | Eduardo Miguel Botía Domingo | 0.67h |  | 3004 |
| 246 | 1.8 | **Finalización del proceso de cierre del proyecto** | 0.31d | 2021-01-25 09:00 | 2021-01-25 11:27 | 205 | 0d |  |  | 2.42h |  |  |
| 247 | 1.8.1 | **Acta de cierre del proyecto** | 0.13d | 2021-01-25 09:00 | 2021-01-25 10:01 |  | 0.18d |  |  | 1.02h | 1.4.0 |  |
| 248 | 1.8.1.1 | Cierre del proyecto | 61min | 2021-01-25 09:00 | 2021-01-25 10:01 |  | 0.18d | start no earlier than 2021-01-25 08:00 | José Manuel Sánchez Ruiz | 1.02h |  | 2005 |
| 249 | 1.8.2 | **Informe de esfuerzo individual** | 0.09d | 2021-01-25 10:45 | 2021-01-25 11:27 |  | 0d |  |  | 0.7h | 1.5.0 |  |
| 250 | 1.8.2.1 | Realizar el Informe de esfuerzo individual para la fase de cierre | 42min | 2021-01-25 10:45 | 2021-01-25 11:27 |  | 0d | start no earlier than 2021-01-25 10:45 | Eduardo Miguel Botía Domingo | 0.7h |  | 2003 |
| 251 | 1.8.3 | **Lecciones aprendidas** | 0.09d | 2021-01-25 10:00 | 2021-01-25 10:42 |  | 0.09d |  |  | 0.7h | 1.2.0 |  |
| 252 | 1.8.3.1 | Realizar Lecciones aprendidas | 42min | 2021-01-25 10:00 | 2021-01-25 10:42 |  | 0.09d | start no earlier than 2021-01-25 10:00 | Juan Noguerol Tirado | 0.7h |  | 2004 |
